# Cronograma preliminar Trabalho final

Schedule from MS Project, 2024-05-27 to 2024-06-20, status date 2024-06-05.

## Calendars

- Estándar: Mon-Fri 09:00-13:00, 15:00-19:00; Sat-Sun off.

## Resources

| Resource |
| --- |
| Rodrigo |
| Alejandro |
| Daniel |
| Filipe |
| Thomas |

## Schedule

| ID | WBS | Task | Duration | Start | Finish | Predecessors | Total slack | Free slack | Resources | Work |
| --- | --- | --- | --- | --- | --- | --- | --- | --- | --- | --- |
| 1 | 1 | **Projeto Supermercado** | 18.12d? | 2024-05-27 18:00 | 2024-06-20 19:31 |  | 0d |  |  | 133h |
| 2 | 1.1 | **Prospecção** | 4.03d? | 2024-05-27 18:00 | 2024-05-31 18:12 |  | 0.1d |  |  | 16h |
| 3 | 1.1.1 | **Esboço Doc. Req.** | 0.19d? | 2024-05-27 18:00 | 2024-05-28 09:30 |  | 0.12d | 0d |  | 9h |
| 4 | 1.1.1.1 | Estudar domínio de aplicação | 0.12d? | 2024-05-27 18:00 | 2024-05-27 19:00 |  | 0d |  | Daniel; Thomas | 2h |
| 5 | 1.1.1.2 | Elicitação de requisitos | 0.06d? | 2024-05-27 19:00 | 2024-05-27 19:30 | 4 | 0d |  | Daniel; Thomas | 1h |
| 6 | 1.1.1.3 | Definição de escopo do projeto | 0.12d? | 2024-05-27 19:30 | 2024-05-27 20:30 | 5 | 0d |  | Daniel; Thomas | 2h |
| 7 | 1.1.1.4 | Reunião rápida discussão requisitos | 0.06d? | 2024-05-27 19:30 | 2024-05-27 20:00 | 5 | 0d |  | Daniel; Thomas | 1h |
| 8 | 1.1.1.5 | Redição Esboço Doc. Req. | 0.12d? | 2024-05-27 20:00 | 2024-05-27 21:00 | 7 | 0d |  | Daniel; Thomas | 2h |
| 9 | 1.1.1.6 | Revisão Esb. Doc. Req. | 0.12d? | 2024-05-28 08:00 | 2024-05-28 09:30 | 8 | 0.06d |  | Alejandro; Filipe | 1h |
| 10 | 1.1.2 | **Est. Tam. Preliminar** | 1.12d? | 2024-05-28 18:00 | 2024-05-29 19:20 | 3 | 2d | 0d |  | 3h |
| 11 | 1.1.2.1 | Reunião com equipe Esb. Doc. Req. | 0.04d? | 2024-05-28 18:00 | 2024-05-28 18:20 | 3 | 2.08d | 0d | Rodrigo; Daniel; Thomas | 1h |
| 12 | 1.1.2.2 | Elaborar Est. Tam. Preliminar | 0.12d? | 2024-05-28 18:20 | 2024-05-28 19:20 | 11 | 2d | 0d | Rodrigo | 1h |
| 13 | 1.1.2.3 | Revisar Est. Tam. Preliminar | 0.5d? | 2024-05-28 19:20 | 2024-05-29 19:20 | 12 | 2d |  | Daniel [12.5%]; Thomas [12.5%] | 1h |
| 14 | 1.1.3 | **Cronograma Preliminar** | 3.84d? | 2024-05-28 09:30 | 2024-05-31 18:12 | 3 | 0.1d | 0d |  | 4h |
| 15 | 1.1.3.1 | Encontro rápido com equipe | 0.05d? | 2024-05-28 09:30 | 2024-05-28 18:12 | 3 | 0.1d | 0d | Rodrigo; Alejandro; Daniel; Filipe; Thomas | 1h |
| 16 | 1.1.3.2 | Criação Cro. Preliminar | 1d? | 2024-05-28 18:12 | 2024-05-30 18:12 | 15 | 0.1d | 0d | Rodrigo [25%] | 2h |
| 17 | 1.1.3.3 | Revisar Cro.Preliminar | 0.5d? | 2024-05-30 18:12 | 2024-05-31 18:12 | 16 | 0.1d |  | Daniel [12.5%]; Thomas [12.5%] | 1h |
| 18 | 1.2 | **Análise** | 4.12d? | 2024-05-28 18:00 | 2024-06-03 22:00 | 3 | 0d |  |  | 23h |
| 19 | 1.2.1 | **Elaboração Doc. Req. Definitivo** | 1.25d? | 2024-05-28 18:00 | 2024-05-30 10:00 |  | 2.88d |  |  | 14h |
| 20 | 1.2.1.1 | Reunião rápida discussão req. | 0.12d? | 2024-05-28 18:00 | 2024-05-28 19:00 | 3 | 4d |  | Daniel; Thomas | 2h |
| 21 | 1.2.1.2 | Refinamento Escopo do Projeto | 0.19d? | 2024-05-28 18:00 | 2024-05-28 19:30 | 3 | 3d | 0d | Daniel; Thomas | 3h |
| 22 | 1.2.1.3 | Redição Doc. Req. Definitivo | 0.44d? | 2024-05-28 19:30 | 2024-05-29 19:00 | 21 | 2d | 0d | Daniel; Thomas | 7h |
| 23 | 1.2.1.4 | Revisão Doc. Req. Definitivo | 0.25d? | 2024-05-30 08:00 | 2024-05-30 10:00 | 22 | 2.5d |  | Alejandro; Filipe | 2h |
| 24 | 1.2.2 | **Est. Tam. Definitivo** | 1.92d? | 2024-05-29 19:20 | 2024-05-31 18:20 | 10 | 1.08d |  |  | 4h |
| 25 | 1.2.2.1 | Refinamento da Est. Tam. Preliminar | 0.38d? | 2024-05-29 19:20 | 2024-05-30 18:20 | 10 | 1.08d | 0d | Rodrigo | 3h |
| 26 | 1.2.2.2 | Revisão da Est. Tam. Definitivo | 0.5d? | 2024-05-30 18:20 | 2024-05-31 18:20 | 25 | 1.08d |  | Daniel [12.5%]; Thomas [12.5%] | 1h |

| ID | WBS | Task | Duration | Start | Finish | Predecessors | Total slack | Free slack | Resources | Work |
| --- | --- | --- | --- | --- | --- | --- | --- | --- | --- | --- |
| 27 | 1.2.3 | **Elaboração Cro. Definitivo** | 1.1d? | 2024-05-31 18:12 | 2024-06-03 22:00 | 14 | 0d |  |  | 5h |
| 28 | 1.2.3.1 | Encontro com equipe toda | 0.05d? | 2024-05-31 18:12 | 2024-06-01 09:12 | 14 | 0d |  | Rodrigo; Alejandro; Daniel; Filipe; Thomas | 1h |
| 29 | 1.2.3.2 | Refinamento do Cro. Preliminar | 0.38d? | 2024-06-01 14:00 | 2024-06-01 17:00 | 28 | 0d |  | Rodrigo | 3h |
| 30 | 1.2.3.3 | Revisão do Cro. Definitivo | 0.5d? | 2024-06-03 18:00 | 2024-06-03 22:00 | 29 | 0d |  | Daniel [12.5%]; Thomas [12.5%] | 1h |
| 31 | 1.3 | **Projeto** | 0.25d? | 2024-06-04 08:00 | 2024-06-04 11:00 | 18 | 0d |  |  | 6h |
| 32 | 1.3.1 | **MRB** | 0.25d? | 2024-06-04 08:00 | 2024-06-04 11:00 | 18 | 0d |  |  | 3h |
| 33 | 1.3.1.1 | Criação do MRB | 0.25d? | 2024-06-04 08:00 | 2024-06-04 10:00 | 18 | 0d |  | Alejandro | 2h |
| 34 | 1.3.1.2 | Revisão do MRB | 0.12d? | 2024-06-04 10:00 | 2024-06-04 11:00 | 33 | 0d |  | Filipe | 1h |
| 35 | 1.3.2 | **Diagrama de Classe** | 0.25d? | 2024-06-04 08:00 | 2024-06-04 11:00 | 18 | 0d |  |  | 3h |
| 36 | 1.3.2.1 | Elaboração de Diag. De Classe | 0.25d? | 2024-06-04 08:00 | 2024-06-04 10:00 | 18 | 0d |  | Alejandro | 2h |
| 37 | 1.3.2.2 | Revisão de Diag. De Classe | 0.12d? | 2024-06-04 10:00 | 2024-06-04 11:00 | 36 | 0d |  | Filipe | 1h |
| 38 | 1.4 | **Implementação** | 11.5d? | 2024-06-04 13:00 | 2024-06-19 22:00 | 31 | 0d |  |  | 80h |
| 39 | 1.4.1 | **Release 1** | 4.5d? | 2024-06-04 13:00 | 2024-06-10 20:00 | 31 | 0d |  |  | 26h |
| 40 | 1.4.1.1 | **Implementação primeira leva CRUD/RFS** | 3.5d? | 2024-06-04 13:00 | 2024-06-08 15:00 | 31 | 0d |  |  | 19h |
| 41 | 1.4.1.1.1 | Implementação CRUD usuário | 1d? | 2024-06-04 13:00 | 2024-06-05 14:00 |  | 0d |  | Rodrigo; Filipe | 8h |
| 42 | 1.4.1.1.2 | Implementação CRUD Produtos | 1d? | 2024-06-05 18:00 | 2024-06-07 21:00 | 41 | 0d |  | Rodrigo; Filipe | 8h |
| 43 | 1.4.1.1.3 | Teste primeira leva Selenium | 0.38d? | 2024-06-07 21:00 | 2024-06-08 15:00 | 42 | 0d |  | Thomas; Alejandro | 3h |
| 44 | 1.4.1.2 | **Atualização da Branch** | 1d? | 2024-06-08 15:00 | 2024-06-10 20:00 | 43 | 0d |  |  | 7h |
| 45 | 1.4.1.2.1 | Atualizar versão | 0.25d? | 2024-06-08 15:00 | 2024-06-10 19:00 | 43 | 0d |  | Thomas | 2h |
| 46 | 1.4.1.2.2 | Atualizar DRE | 0.38d? | 2024-06-08 15:00 | 2024-06-10 20:00 | 43 | 0d |  | Thomas | 3h |
| 47 | 1.4.1.2.3 | Atualização Cronograma | 0.25d? | 2024-06-08 15:00 | 2024-06-10 19:00 | 43 | 0d |  | Thomas | 2h |
| 48 | 1.4.2 | **Release 2** | 4d? | 2024-06-10 20:00 | 2024-06-14 19:00 | 39 | 0d |  |  | 26h |
| 49 | 1.4.2.1 | **Implementação segunda leva CRUD/RFS** | 3d? | 2024-06-10 20:00 | 2024-06-13 20:00 | 39 | 0.12d |  |  | 19h |
| 50 | 1.4.2.1.1 | Implementação CRUD nota fiscal | 1d? | 2024-06-10 20:00 | 2024-06-12 10:00 |  | 0.12d | 0d | Filipe; Rodrigo | 8h |
| 51 | 1.4.2.1.2 | Implementação CRUD Estoque | 1d? | 2024-06-12 10:00 | 2024-06-13 11:00 | 50 | 0.38d |  | Filipe; Rodrigo | 8h |
| 52 | 1.4.2.1.3 | Teste segunda leva Selenium | 0.25d? | 2024-06-13 18:00 | 2024-06-13 20:00 | 51 | 0.12d | 0d | Thomas; Alejandro | 3h |

| ID | WBS | Task | Type | Duration | Start | Finish | Predecessors | Total slack | Resources | Work |
| --- | --- | --- | --- | --- | --- | --- | --- | --- | --- | --- |
| 53 | 1.4.2.2 | **Atualização da Branch** |  | 1d? | 2024-06-13 20:00 | 2024-06-14 19:00 | 52 | 0d |  | 7h |
| 54 | 1.4.2.2.1 | Atualizar versão |  | 0.25d? | 2024-06-13 20:00 | 2024-06-13 22:00 | 52 | 1d | Thomas | 2h |
| 55 | 1.4.2.2.2 | Atualizar DRE |  | 0.38d? | 2024-06-13 20:00 | 2024-06-14 19:00 | 52 | 0d | Thomas | 3h |
| 56 | 1.4.2.2.3 | Atualização Cronograma |  | 0.25d? | 2024-06-13 20:00 | 2024-06-13 22:00 | 52 | 1d | Thomas | 2h |
| 57 | 1.4.3 | **Release 3** |  | 3d? | 2024-06-14 19:00 | 2024-06-19 22:00 | 48 | 0d |  | 28h |
| 58 | 1.4.3.1 | **Implementação terceira leva CRUD/RFS** |  | 3d? | 2024-06-14 19:00 | 2024-06-19 19:00 | 48 | 0d |  | 21h |
| 59 | 1.4.3.1.1 | Implementação primeiro CRUD |  | 1.12d? | 2024-06-14 19:00 | 2024-06-17 13:30 |  | 0d | Filipe; Daniel | 9h |
| 60 | 1.4.3.1.2 | Implementação segundo CRUD |  | 1.12d? | 2024-06-17 13:30 | 2024-06-19 13:30 | 59 | 0d | Filipe; Daniel | 9h |
| 61 | 1.4.3.1.3 | Teste terceira leva Selenium |  | 0.12d? | 2024-06-19 18:00 | 2024-06-19 19:00 | 60 | 0d | Rodrigo; Alejandro; Thomas | 3h |
| 62 | 1.4.3.2 | **Atualização da Branch** |  | 0d? | 2024-06-19 19:00 | 2024-06-19 22:00 | 61 | 0d |  | 7h |
| 63 | 1.4.3.2.1 | Atualizar versão |  | 0.25d? | 2024-06-19 19:00 | 2024-06-19 21:00 | 61 | 0d | Thomas | 2h |
| 64 | 1.4.3.2.2 | Atualizar DRE |  | 0.38d? | 2024-06-19 19:00 | 2024-06-19 22:00 | 61 | 0d | Thomas | 3h |
| 65 | 1.4.3.2.3 | Atualização Cronograma |  | 0.25d? | 2024-06-19 19:00 | 2024-06-19 21:00 | 61 | 0d | Thomas | 2h |
| 66 | 1.5 | **Manutenção** |  | 1d? | 2024-06-19 22:00 | 2024-06-20 19:31 | 38 | 0d |  | 8h |
| 67 | 1.5.1 | Correções finais no código-fonte |  | 0.25d? | 2024-06-20 08:00 | 2024-06-20 18:40 | 38 | 0.04d | Filipe; Rodrigo; Alejandro | 2h |
| 68 | 1.5.2 | Monitoramento do funcionamento código fonte |  | 0.31d? | 2024-06-20 09:00 | 2024-06-20 19:31 | 38 | 0d | Filipe; Thomas; Rodrigo | 4h |
| 69 | 1.5.3 | Checagem de operabilidade do sistema |  | 0.12d? | 2024-06-20 18:00 | 2024-06-20 19:00 | 38 | 0d | Daniel; Thomas | 2h |
| 70 | 1.5.4 | Atualização Professor projeto final | milestone | 0d? | 2024-06-19 22:00 | 2024-06-19 22:00 | 38 | 1d | Alejandro; Daniel; Filipe; Rodrigo; Thomas |  |
